# Cronograma V2

Schedule from MS Project, 2024-04-27 to 2024-10-25, A marks actual dates.

## Calendars

- Estándar: Mon-Fri 09:00-13:00, 15:00-19:00; Sat-Sun off.

## Resources

| Resource | Group |
| --- | --- |
| Emmanuel Julio | Backend |
| Luci Oses | Backend |
| Claudio Damico | Backend |
| Matias Ayala | Frontend |
| Matias Benites | Frontend |
| Matias Suares | Frontend |
| Daniel Campos | SEO y Marketing |
| Lucas Olivera | Arquitectura |
| Líder técnico |  |
| Luciano Ghelfi | Diseño grafico UX |
| Mauro Salinas | Devops |
| Tamara Cardenas | Devops |
| Pablo Sabatino | DBA |
| Daiana Cabrera | Testing |
| Javier Splinter | Testing |
| Mariana Lopez | Testing |
| Belen Julio | Diseñador grafico UX |

## Schedule

| ID | WBS | Task | Duration | Start | Finish | Predecessors | Complete | Remaining | Total slack | Free slack | Constraint | Resources | Work | Actual work |
| --- | --- | --- | --- | --- | --- | --- | --- | --- | --- | --- | --- | --- | --- | --- |
| 1 | 1 | **0. Desarrollo de software** | 130d? | 2024-04-27 A | 2024-10-25 |  | 2% | 127.44d? | 0d |  |  |  | 2365h | 30h |
| 2 | 1.1 | **Sprint 1** | 48.75d | 2024-04-29 A | 2024-07-04 |  | 7% | 45.27d | 81.25d |  |  |  | 1170h | 30h |
| 3 | 1.1.1 | **1. Diseño de base de datos y configuracion de cloud.** | 3.75d | 2024-04-29 A | 2024-05-02 |  | 50% | 1.88d | 0d |  |  |  | 60h | 30h |
| 4 | 1.1.1.1 | 1.1. DER final del modelo de base de datos | 30h | 2024-04-29 A | 2024-05-02 A |  | 100% |  |  |  |  | Pablo Sabatino | 30h | 30h |
| 5 | 1.1.1.2 | 1.2. Clusterización y configuración del CLOUD | 30h | 2024-04-29 | 2024-05-02 |  |  |  | 0d |  |  | Mauro Salinas | 30h |  |
| 6 | 1.1.2 | **2. Diseño arquitectura back end** | 18.75d | 2024-05-02 | 2024-05-29 | 4 |  |  | 0d |  |  |  | 600h |  |
| 7 | 1.1.2.1 | 2.1. Arquitectura en microservicios planificada, arquitectura CLOUD y arquitectura de paquetes estratégica para satisfacer servicios | 150h | 2024-05-02 | 2024-05-29 | 4, 5 |  |  | 0d |  |  | Emmanuel Julio; Lucas Olivera; Mauro Salinas; Luci Oses | 600h |  |
| 8 | 1.1.3 | **3. Diseño arquitectura front end** | 26.25d | 2024-05-29 | 2024-07-04 |  |  |  | 81.25d |  |  |  | 510h |  |
| 9 | 1.1.3.1 | 3.1. Arquitectura hexagonal evolutiva con integración de módulo de lectura archivo ADOBE.XD y mapeo a archivo de salida JSX. | 210h | 2024-05-29 | 2024-07-04 | 7 |  |  | 81.25d |  |  | Lucas Olivera; Matias Ayala; Matias Benites | 510h |  |
| 10 | 1.2 | **Sprint 2** | 87.5d | 2024-04-29 | 2024-08-28 |  |  |  | 22.5d |  |  |  | 337h |  |
| 11 | 1.2.1 | **5. Módulo Login** | 11d | 2024-05-29 | 2024-06-13 |  |  |  | 0d |  |  |  | 93h |  |
| 12 | 1.2.1.1 | **5.1. ABM USUARIOS** | 0.38d | 2024-05-29 | 2024-05-29 |  |  |  | 0d |  |  |  | 12h |  |
| 13 | 1.2.1.1.1 | 5.1.1. Insertar usuarios | 3h | 2024-05-29 | 2024-05-29 | 7 |  |  | 105.62d |  |  | Claudio Damico | 3h |  |
| 14 | 1.2.1.1.2 | 5.1.2. Editar usuarios | 3h | 2024-05-29 | 2024-05-29 | 7 |  |  | 105.62d |  |  | Emmanuel Julio | 3h |  |
| 15 | 1.2.1.1.3 | 5.1.3. Borrar usuarios | 3h | 2024-05-29 | 2024-05-29 | 7 |  |  | 105.62d |  |  | Luci Oses | 3h |  |
| 16 | 1.2.1.1.4 | 5.1.4. Obtener usuarios | 3h | 2024-05-29 | 2024-05-29 | 7 |  |  | 0d |  |  | Claudio Damico | 3h |  |
| 17 | 1.2.1.2 | 5.2. Servicio Login back end con seguridad JWT & comprobación de errores | 15h | 2024-05-29 | 2024-05-31 | 16 |  |  | 0d |  |  | Emmanuel Julio | 15h |  |
| 18 | 1.2.1.3 | 5.3. Integración de servicios front end en google, facebook, GOOGLE +, Slack e instagram. | 20h | 2024-06-04 | 2024-06-06 | 17 |  |  | 0d |  |  | Luci Oses | 20h |  |
| 19 | 1.2.1.4 | 5.4. Vista completa front end con integración de back end | 30h | 2024-06-06 | 2024-06-12 | 17, 18 |  |  | 0d |  |  | Matias Suares | 30h |  |
| 20 | 1.2.1.5 | 5.5. Testeo modulo completo | 8h | 2024-06-12 | 2024-06-13 | 19 |  |  | 0d |  |  | Mariana Lopez; Daiana Cabrera | 16h |  |
| 21 | 1.2.2 | **6. Módulo Home** | 77.5d | 2024-04-29 | 2024-08-14 |  |  |  | 0d |  |  |  | 98h |  |
| 22 | 1.2.2.1 | 6.1. Concepto UX de diseño | 10h | 2024-04-29 | 2024-04-30 |  |  |  | 30.75d | 0d |  | Belen Julio | 10h |  |
| 23 | 1.2.2.2 | 6.2. Servicios back end involucrando todas las funcionalidades del concepto de diseño. | 42h | 2024-06-13 | 2024-08-07 | 7, 20, 22 |  |  | 0d |  | start no earlier than 2024-04-19 | Emmanuel Julio | 42h |  |
| 24 | 1.2.2.3 | 6.3. Vista front end completa con integración back end. | 30h | 2024-08-07 | 2024-08-13 | 23 |  |  | 0d |  |  | Matias Ayala | 30h |  |
| 25 | 1.2.2.4 | 6.4. Testeo modulo completo | 8h | 2024-08-13 | 2024-08-14 | 24 |  |  | 0d |  |  | Javier Splinter; Mariana Lopez | 16h |  |

| ID | WBS | Task | Duration | Start | Finish | Predecessors | Total slack | Free slack | Resources | Work |
| --- | --- | --- | --- | --- | --- | --- | --- | --- | --- | --- |
| 26 | 1.2.3 | **7. Módulo Compras** | 86.25d | 2024-04-30 | 2024-08-28 |  | 36.5d |  |  | 146h |
| 27 | 1.2.3.1 | 7.1. Concepto UX de diseño | 10h | 2024-04-30 | 2024-05-01 | 22 | 101.62d | 0d | Luciano Ghelfi | 10h |
| 28 | 1.2.3.2 | **7.2. Servicio back end de compras con las integraciones de método de pago:** | 3d | 2024-08-14 | 2024-08-19 |  | 0d |  |  | 64h |
| 29 | 1.2.3.2.1 | 7.2.1. Transferencia. | 12h | 2024-08-14 | 2024-08-15 | 25 | 0d |  | Claudio Damico | 12h |
| 30 | 1.2.3.2.2 | 7.2.2. Mercado pago | 12h | 2024-08-14 | 2024-08-15 | 25 | 0d |  | Emmanuel Julio | 12h |
| 31 | 1.2.3.2.3 | 7.2.3. Crypto | 16h | 2024-08-14 | 2024-08-16 | 25 | 1d |  | Luci Oses | 16h |
| 32 | 1.2.3.2.4 | 7.2.4. Tarjeta de crédito | 12h | 2024-08-16 | 2024-08-19 | 25, 30 | 0d |  | Emmanuel Julio | 12h |
| 33 | 1.2.3.2.5 | 7.2.5. Tarjeta de débito. | 12h | 2024-08-16 | 2024-08-19 | 25, 29 | 0d |  | Claudio Damico | 12h |
| 34 | 1.2.3.3 | 7.3.Integración de prevención de fraude de tarjeta. | 16h | 2024-08-19 | 2024-08-21 | 32, 33 | 41.5d | 0d | Lucas Olivera | 16h |
| 35 | 1.2.3.4 | 7.4. Vista front end completa con integración de back end | 40h | 2024-08-19 | 2024-08-26 | 28 | 0d |  | Matias Ayala | 40h |
| 36 | 1.2.3.5 | 7.5. Testeo modulo completo | 16h | 2024-08-26 | 2024-08-28 | 35 | 0d |  | Daiana Cabrera | 16h |
| 37 | 1.3 | **Sprint 3** | 100.38d? | 2024-05-01 | 2024-09-18 |  | 27.12d |  |  | 158h |
| 38 | 1.3.1 | **8. Módulo de Búsqueda y Filtrado** | 94.75d? | 2024-05-01 | 2024-09-11 |  | 32.75d |  |  | 103h |
| 39 | 1.3.1.1 | 8.1. Concepto UX de diseño | 10h | 2024-05-01 | 2024-05-02 | 27 | 101.62d | 0d | Matias Benites | 10h |
| 40 | 1.3.1.2 | 8.2. Servicio back end de búsqueda y filtrado contemplando las 15 formas de filtros diferentes incluyendo filtros dinámicos y estáticos. | 30h | 2024-08-28 | 2024-09-03 | 36 | 0d |  | Emmanuel Julio | 30h |
| 41 | 1.3.1.3 | 8.3. Concepto UX de integración de Landing page de categorías. | 15h | 2024-05-02 | 2024-05-06 | 39 | 120.38d |  | Belen Julio | 15h |
| 42 | 1.3.1.4 | 8.4. Vista front end completa con integración de back end. | 40h | 2024-09-03 | 2024-09-10 | 40 | 0d |  | Matias Suares | 40h |
| 43 | 1.3.1.5 | 8.5. Testeo modulo completo | 1d? | 2024-09-10 | 2024-09-11 | 42 | 0d |  | Javier Splinter | 8h |
| 44 | 1.3.2 | **9. Módulo Back Office User.** | 99.12d | 2024-05-02 | 2024-09-18 |  | 5.25d |  |  | 55h |
| 45 | 1.3.2.1 | 9.1. Concepto UX diseño. | 10h | 2024-05-02 | 2024-05-03 | 39 | 101.62d | 0d | Luciano Ghelfi | 10h |
| 46 | 1.3.2.2 | 9.2. Servicios de back end para la obtención de datos de ventas por usuario. | 12h | 2024-09-11 | 2024-09-12 | 43 | 0d |  | Claudio Damico | 12h |
| 47 | 1.3.2.3 | 9.3. Vista front end completa con integración de back end. | 25h | 2024-09-12 | 2024-09-17 | 46 | 0d |  | Matias Benites | 25h |
| 48 | 1.3.2.4 | 9.4. Testeo modulo completo | 8h | 2024-09-17 | 2024-09-18 | 47 | 0d |  | Javier Splinter | 8h |
| 49 | 1.4 | **Sprint 4** | 124.12d | 2024-04-27 | 2024-10-18 |  | 0d |  |  | 233h |
| 50 | 1.4.1 | **10. Back Office Admin** | 106.12d | 2024-05-06 | 2024-10-01 |  | 18.88d |  |  | 100h |
| 51 | 1.4.1.1 | 10.1. Concepto UX diseño. | 10h | 2024-05-06 | 2024-05-07 | 45 | 101.62d | 0d | Luciano Ghelfi | 10h |

| ID | WBS | Task | Duration | Start | Finish | Predecessors | Total slack | Free slack | Resources | Work |
| --- | --- | --- | --- | --- | --- | --- | --- | --- | --- | --- |
| 52 | 1.4.1.2 | **10.2. ABM VENTAS** | 0.5d | 2024-09-18 | 2024-09-19 |  | 0d |  |  | 16h |
| 53 | 1.4.1.2.1 | 10.2.1.Insertar venta. | 4h | 2024-09-18 | 2024-09-19 | 48 | 26.62d |  | Emmanuel Julio | 4h |
| 54 | 1.4.1.2.2 | 10.2.2. Borrar venta. | 4h | 2024-09-18 | 2024-09-19 | 48 | 26.62d |  | Claudio Damico | 4h |
| 55 | 1.4.1.2.3 | 10.2.3. Editar venta. | 4h | 2024-09-18 | 2024-09-19 | 48 | 26.62d |  | Luci Oses | 4h |
| 56 | 1.4.1.2.4 | 10.2.4. Obtener venta. | 4h | 2024-09-18 | 2024-09-19 | 48 | 0d |  | Luci Oses | 4h |
| 57 | 1.4.1.3 | 10.3. Servicios back end para la obtención y filtrado de ventas. | 20h | 2024-09-19 | 2024-09-23 | 56 | 0d |  | Emmanuel Julio | 20h |
| 58 | 1.4.1.4 | 10.4. Servicios back end para la obtención de estadísticas. | 12h | 2024-09-19 | 2024-09-20 | 56 | 1d |  | Claudio Damico | 12h |
| 59 | 1.4.1.5 | 10.5. Vista front end completa con integración de back end. | 30h | 2024-09-23 | 2024-09-27 | 57, 58 | 0d |  | Matias Suares | 30h |
| 60 | 1.4.1.6 | 10.6. Testeo modulo completo | 12h | 2024-09-27 | 2024-10-01 | 59 | 0d |  | Mariana Lopez | 12h |
| 61 | 1.4.2 | **11. Módulo Producto** | 112.12d | 2024-05-07 | 2024-10-10 |  | 0d |  |  | 68h |
| 62 | 1.4.2.1 | 11.1. Concepto UX diseño. | 10h | 2024-05-07 | 2024-05-08 | 51 | 101.62d | 0d | Luciano Ghelfi | 10h |
| 63 | 1.4.2.2 | 11.2. Servicios back end para la obtención de datos del producto, cálculo de envio y cálculo de pagos. | 20h | 2024-10-01 | 2024-10-03 | 60 | 0d |  | Claudio Damico | 20h |
| 64 | 1.4.2.3 | 11.3. Vista front end completa con integración de back end & integración SEO. | 30h | 2024-10-03 | 2024-10-09 | 63 | 0d |  | Claudio Damico | 30h |
| 65 | 1.4.2.4 | 11.4. Testeo modulo completo | 8h | 2024-10-09 | 2024-10-10 | 64 | 0d |  | Javier Splinter | 8h |
| 66 | 1.4.3 | **12. Modulo Ofertas** | 116.62d | 2024-05-08 | 2024-10-18 |  | 5.88d |  |  | 65h |
| 67 | 1.4.3.1 | 12.1. Concepto UX diseño USER & BACK OFFICE | 10h | 2024-05-08 | 2024-05-09 | 62 | 101.62d | 0d | Belen Julio | 10h |
| 68 | 1.4.3.2 | **12.2. ABM Ofertas** | 0.38d | 2024-10-10 | 2024-10-10 |  | 0d |  |  | 12h |
| 69 | 1.4.3.2.1 | 12.2.1. Insertar oferta. | 3h | 2024-10-10 | 2024-10-10 | 65 | 11.25d |  | Claudio Damico | 3h |
| 70 | 1.4.3.2.2 | 12.2.2. Editar oferta. | 3h | 2024-10-10 | 2024-10-10 | 65 | 11.25d |  | Emmanuel Julio | 3h |
| 71 | 1.4.3.2.3 | 12.2.3. Borrar oferta. | 3h | 2024-10-10 | 2024-10-10 | 65 | 11.25d |  | Luci Oses | 3h |
| 72 | 1.4.3.2.4 | 12.2.4. Obtener oferta. | 3h | 2024-10-10 | 2024-10-10 | 65 | 0d |  | Luci Oses | 3h |
| 73 | 1.4.3.3 | 12.3. Servicios back end para la obtención de productos de oferta. | 5h | 2024-10-10 | 2024-10-11 | 72 | 0d |  | Claudio Damico | 5h |
| 74 | 1.4.3.4 | 12.4. Vista front end completa en back office ADMIN con integración de back end. | 30h | 2024-10-11 | 2024-10-17 | 73 | 0d |  | Matias Benites | 30h |
| 75 | 1.4.3.5 | 12.5. Testeo modulo completo | 8h | 2024-10-17 | 2024-10-18 | 74 | 0d |  | Daiana Cabrera | 8h |

| ID | WBS | Task | Type | Duration | Start | Finish | Predecessors | Total slack | Free slack | Resources | Work |
| --- | --- | --- | --- | --- | --- | --- | --- | --- | --- | --- | --- |
| 76 | 1.4.4 | **13. Módulo Ventas** |  | 0d | 2024-04-27 | 2024-04-27 |  | 0d |  |  |  |
| 77 | 1.4.4.1 | 13.1. Concepto UX diseñO | manual | 1d | 2024-04-27 | 2024-04-27 |  |  |  |  |  |
| 78 | 1.4.4.2 | 13.2. Servicios back end que están involucrados en todo el circuito lógico de compras, incluyendo los pagos con tarjeta y la prevención de fraude. | manual | 1d | 2024-04-27 | 2024-04-27 |  |  |  |  |  |
| 79 | 1.4.4.3 | 13.3. Vista front end completa con integración de back end | manual | 1d | 2024-04-27 | 2024-04-27 |  |  |  |  |  |
| 80 | 1.4.4.4 | 13.4. Testeo modulo completo | manual | 1d? | 2024-04-27 | 2024-04-27 |  |  |  |  |  |
| 81 | 1.5 | **Sprint 5** |  | 121.25d | 2024-05-09 | 2024-10-25 |  | 0d |  |  | 417h |
| 82 | 1.5.1 | **14. Módulo notificaciones** |  | 121.25d | 2024-05-09 | 2024-10-25 |  | 0d |  |  | 84h |
| 83 | 1.5.1.1 | 14.1. Concepto UX diseño USER & BACK OFFICE |  | 10h | 2024-05-09 | 2024-05-10 | 67 | 101.62d | 0d | Luciano Ghelfi | 10h |
| 84 | 1.5.1.2 | **14.2. ABM NOTIFICACIONES** |  | 1.38d | 2024-10-18 | 2024-10-21 |  | 0d |  |  | 19h |
| 85 | 1.5.1.2.1 | 14.2.1. Insertar notificaciones. |  | 7h | 2024-10-18 | 2024-10-21 | 75 | 4.5d |  | Claudio Damico | 7h |
| 86 | 1.5.1.2.2 | 14.2.2. Editar notificaciones. |  | 4h | 2024-10-18 | 2024-10-18 | 75 | 5.38d |  | Emmanuel Julio | 4h |
| 87 | 1.5.1.2.3 | 14.2.3. Borrar notificaciones. |  | 4h | 2024-10-18 | 2024-10-18 | 75 | 5.38d |  | Luci Oses | 4h |
| 88 | 1.5.1.2.4 | 14.2.4. Obtener notificaciones. |  | 4h | 2024-10-18 | 2024-10-18 | 75 | 0d |  | Claudio Damico | 4h |
| 89 | 1.5.1.3 | 14.3. Servicios back end para la inserción masiva de notificaciones. |  | 12h | 2024-10-18 | 2024-10-22 | 88 | 3.88d |  | Emmanuel Julio | 12h |
| 90 | 1.5.1.4 | 14.4. Servicios back end para la obtención de notificaciones del usuario. |  | 5h | 2024-10-18 | 2024-10-21 | 88 | 0d |  | Luci Oses | 5h |
| 91 | 1.5.1.5 | 14.5. Vista front end dentro de back office admin completa con integración de back end. |  | 30h | 2024-10-21 | 2024-10-24 | 90, 60 | 0d |  | Matias Benites | 30h |
| 92 | 1.5.1.6 | 14.6. Testeo modulo completo |  | 8h | 2024-10-25 | 2024-10-25 | 91 | 0d |  | Javier Splinter | 8h |
| 93 | 1.5.2 | **15. Módulo Mailing** |  | 78.5d | 2024-05-13 | 2024-08-29 |  | 41.5d |  |  | 333h |
| 94 | 1.5.2.1 | 15.1. Configuración de servidor de correos. |  | 10h | 2024-05-29 | 2024-05-30 | 7 | 90.38d | 0d | Mauro Salinas | 10h |
| 95 | 1.5.2.2 | 15.2. Cumplimiento de políticas de seguridad y de contenido para el envio de correos sin entrar en black list. |  | 48h | 2024-08-21 | 2024-08-29 | 34 | 41.5d |  | Lucas Olivera | 48h |
| 96 | 1.5.2.3 | 15.3. Diseño UX para cada prototipo de correo de Marketing. |  | 20h | 2024-05-13 | 2024-05-15 | 83 | 101.62d | 0d | Belen Julio | 20h |
| 97 | 1.5.2.4 | 15.4. Diseño UX para cada correo por venta realizada, cambios de estado de venta, de pago y de envio. |  | 20h | 2024-05-15 | 2024-05-17 | 96 | 101.62d | 0d | Luciano Ghelfi | 20h |
| 98 | 1.5.2.5 | 15.5. Servicios back end para la creación de correos por Carrito abandonado. |  | 20h | 2024-05-20 | 2024-05-22 | 97 | 101.62d | 11.25d | Claudio Damico; Matias Ayala | 40h |
| 99 | 1.5.2.6 | 15.6. Servicios back end para la creación de correos por descuentos. |  | 20h | 2024-05-30 | 2024-06-04 | 94 | 90.38d | 0d | Luci Oses; Matias Benites | 40h |
| 100 | 1.5.2.7 | 15.7. Servicios back end para la creación de correos por ofertas. |  | 20h | 2024-06-04 | 2024-06-06 | 99 | 90.38d | 0d | Emmanuel Julio; Matias Suares | 40h |
| 101 | 1.5.2.8 | 15.8. Servicios back end para la creación de correos por noticias propias |  | 20h | 2024-06-06 | 2024-06-11 | 100, 98 | 90.38d | 0d | Claudio Damico; Matias Ayala | 40h |
| 102 | 1.5.2.9 | 15.9. Servicios back end con la integración de envío de correos por creación de venta o cambio de estado. |  | 20h | 2024-06-11 | 2024-06-13 | 101 | 90.38d | 0d | Luci Oses; Matias Benites | 40h |
| 103 | 1.5.2.10 | 15.10. Vista front dentro de back office admin completa con integración de back end |  | 35h | 2024-06-13 | 2024-06-20 | 102 | 90.38d |  | Matias Suares | 35h |

| ID | WBS | Task | Duration | Start | Finish | Predecessors | Total slack | Free slack | Resources | Work |
| --- | --- | --- | --- | --- | --- | --- | --- | --- | --- | --- |
| 104 | 1.6 | **Sprint 6** | 119.62d | 2024-04-29 | 2024-10-11 |  | 10.38d |  |  | 50h |
| 105 | 1.6.1 | **4. Análisis de SEO** | 119.62d | 2024-04-29 | 2024-10-11 |  | 10.38d |  |  | 50h |
| 106 | 1.6.1.1 | **4.1. Análisis estructural de posicionamiento orgánico de las vistas.** | 119.62d | 2024-04-29 | 2024-10-11 |  | 10.38d |  |  | 50h |
| 107 | 1.6.1.1.1 | 4.1.1. Home. | 10h | 2024-08-14 | 2024-08-15 | 25 | 51.25d |  | Daniel Campos | 10h |
| 108 | 1.6.1.1.2 | 4.1.2. Producto. | 10h | 2024-10-10 | 2024-10-11 | 65 | 10.38d |  | Daniel Campos | 10h |
| 109 | 1.6.1.1.3 | 4.1.3. Búsqueda y filtrado. | 10h | 2024-09-11 | 2024-09-12 | 43 | 30.25d | 0d | Daniel Campos | 10h |
| 110 | 1.6.1.1.4 | 4.1.4. Landing page categorías. | 10h | 2024-09-12 | 2024-09-13 | 109 | 30.25d |  | Daniel Campos | 10h |
| 111 | 1.6.1.1.5 | 4.1.5. Landing page marcas. | 10h | 2024-04-29 | 2024-04-30 |  | 127.25d |  | Daniel Campos | 10h |
